# GreenhouseIOT

How a schedule from MS Project changed from version to version. A marks actual dates.

## Version 1 (saved 2025-04-04)

Note of the change: Microsoft project con la planificacion y presupuesto del proyecto

| ID | WBS | Task | Duration | Start | Finish | Predecessors | Total float |
| --- | --- | --- | --- | --- | --- | --- | --- |
| 1 | 1 | **Planificación inicial** | 16d | 2024-11-11 | 2024-12-02 |  | 0d |
| 2 |  | Definición de la idea | 5d | 2024-11-11 | 2024-11-15 |  | 0d |
| 3 |  | Diseño de la arquitectura base | 5d | 2024-11-18 | 2024-11-22 | 2 | 0d |
| 4 |  | Configuraciones del repositorio de codigo | 2d | 2024-11-25 | 2024-11-26 | 3 | 0d |
| 5 |  | Creación de la arquitectura del proyecto | 4d | 2024-11-27 | 2024-12-02 | 4 | 0d |
| 6 | 2 | **Creación del módulo** | 37d | 2024-12-03 | 2025-01-22 |  | 0d |
| 7 |  | Diseño del circuito eléctrico | 14d | 2024-12-03 | 2024-12-20 | 2, 5 | 0d |
| 8 |  | Montaje del circuito | 3d | 2025-01-03 | 2025-01-07 | 7 | 24d |
| 9 |  | Diseño de la carcasa 3D | 4d | 2025-01-08 | 2025-01-13 | 8 | 24d |
| 10 |  | Impresión de la carcasa | 5d | 2025-01-16 | 2025-01-22 | 9 | 22d |
| 11 |  | Montaje del módulo | 2d | 2025-01-14 | 2025-01-15 | 7, 9 | 27d |
| 12 |  | Programación del módulo | 7d | 2024-12-23 | 2024-12-31 | 7 | 6d |
| 13 | 3 | **Origen de datos** | 8d | 2025-02-04 | 2025-02-13 |  | 6d |
| 14 |  | Creacion de la api de origen de datos | 2d | 2025-02-04 | 2025-02-05 | 12 | 6d |
| 15 |  | Programación del productor kafka | 1d | 2025-02-13 | 2025-02-13 | 14 | 6d |
| 16 | 4 | **Persistencia de datos** | 5d | 2025-02-06 | 2025-02-12 |  | 0d |
| 17 |  | Diseño de la base de datos | 1d | 2025-02-06 | 2025-02-06 | 7 | 0d |
| 18 |  | Creación de la base de datos | 1d | 2025-02-07 | 2025-02-07 | 17 | 0d |
| 19 |  | Creación de api para la base de datos | 2d | 2025-02-10 | 2025-02-11 | 18 | 0d |
| 20 |  | Programación del consumidor Kafka | 1d | 2025-02-12 | 2025-02-12 | 19 | 0d |
| 21 | 5 | **Explotación de datos** | 54d | 2024-12-03 | 2025-02-14 |  | 5d |
| 22 |  | Boceto diseño gráfico de la aplicación web | 7d | 2024-12-03 | 2024-12-11 | 5 | 5d |
| 23 |  | Desarrollo estructura basica de la web | 7d | 2024-12-12 | 2024-12-20 | 22 | 5d |
| 24 |  | Visualización de datos de ultima lectura | 1d | 2024-12-26 | 2024-12-26 | 23 | 5d |
| 25 |  | Visualización de datos haciendo uso de graficas | 1d | 2024-12-23 | 2024-12-23 | 23 | 8d |
| 26 |  | Paneles de configuración para automatizaciones | 2d | 2024-12-27 | 2024-12-30 | 24, 25 | 5d |
| 27 |  | Lógica de gestión de multiples módulos | 3d | 2025-01-01 | 2025-02-14 | 26 | 5d |
| 28 | 6 | **Sistema visión artificial** | 25d | 2024-12-31 | 2025-02-03 |  | 14d |
| 29 |  | Pagina dedicada para imágenes de los modulos | 1d | 2024-12-31 | 2024-12-31 | 26 | 14d |
| 30 |  | Recolección de dataset de imágenes | 14d | 2025-01-01 | 2025-01-20 | 29 | 14d |
| 31 |  | Entrenamiento de sistema de vision artificial | 7d | 2025-01-21 | 2025-01-29 | 30 | 14d |
| 32 |  | Creación de recomendaciones personalizadas para el usuario | 3d | 2025-01-30 | 2025-02-03 | 31 | 14d |
| 33 | 7 | **Control de calidad** | 45d | 2024-12-23 | 2025-02-21 |  | 0d |
| 34 |  | Creación test automaticos para apis | 7d | 2024-12-23 | 2024-12-31 | 23 | 38d |
| 35 |  | Creación test automaticos para la web | 7d | 2025-02-13 | 2025-02-21 | 20 | 0d |
| 36 |  | HITO: Entrega del proyecto | 0d | 2025-02-21 | 2025-02-21 | 1, 6, 13, 16, 21, 28, 33 | 0d |

## Version 2 (saved 2025-04-10)

Note of the change: TFG 40%

Last finish stays 2025-02-21.

Changed:

| ID | Task | Other |
| --- | --- | --- |
| 11 | Montaje del módulo | resources Encargado hardware; Tuercas inyección [0.5 caja]; Tornillería [0.5 caja]; Pegamento [1 caja] → Encargado hardware; Tuercas inyección [0.5 caja]; Tornillería [0.5 caja]; Pegamento [1 caja]; Contenedores [1 und] |

## Version 3 (saved 2025-06-29)

Note of the change: Actualizada documentacion de TFG a fecha 1/7/25 19:00

Last finish stays 2025-02-21.

Changed:

| ID | Task | Other |
| --- | --- | --- |
| 4 | Configuraciones del repositorio de código | was named Configuraciones del repositorio de codigo |
| 14 | Creación de la api de origen de datos | was named Creacion de la api de origen de datos |
| 15 | Programación del productor Kafka | was named Programación del productor kafka |
| 23 | Desarrollo estructura básica de la web | was named Desarrollo estructura basica de la web |
| 27 | Lógica de gestión de múltiples módulos | was named Lógica de gestión de multiples módulos |
| 28 | **Sistema de recomendaciones personalizadas** | was named Sistema visión artificial |
| 29 | Pagina dedicada para imágenes de los módulos | was named Pagina dedicada para imágenes de los modulos |
| 30 | Desarrollo de la sección de peticiones y recomendaciones | was named Recolección de dataset de imágenes |
| 31 | Sistema de envío de petición personalizada | was named Entrenamiento de sistema de vision artificial |
| 32 | Visualización de recomendación personalizada para el usuario | was named Creación de recomendaciones personalizadas para el usuario |
| 34 | Creación test automáticos para Apis | was named Creación test automaticos para apis |
| 35 | Creación test automáticos para la web | was named Creación test automaticos para la web |
